# Rider Speed

Schedule from MS Project, 2024-11-21 to 2025-05-20, status date 2025-02-20, costs in $, A marks actual dates.

## Calendars

- Standard: Mon-Thu 08:00-12:00, 13:00-17:00; Fri-Sat off; Sun 08:00-12:00, 13:00-17:00.

## Resources

| Resource | Unit | Rate |
| --- | --- | --- |
| System Analyst Team |  | 70 |
| Graphic Designer |  | 30 |
| System diagram Designer |  | 50 |
| UI/UX Designer Team |  | 50 |
| Frontend Developer Team |  | 70 |
| Backend Developer Team |  | 80 |
| IT team |  | 80 |
| Security Specialist Team |  | 75 |
| Tester (QA Specialist) Team |  | 80 |
| Training Team |  | 75 |
| Deployment Team |  | 60 |
| Servers | Server | 25 |
| Network Cables | Cable | 10 |
| Routers | Router | 25 |
| Switchs | Switch | 40 |
| Storage Devices | Device | 50 |
| GPS Trackers | Device | 30 |
| Testing Servers | Device | 30 |
| Security devices | Device | 30 |
| Software Tools |  |  |
| Training Cost |  |  |

## Schedule

| ID | WBS | Task | Type | Duration | Start | Finish | Predecessors | Complete | Remaining | Baseline 1 start | Baseline 1 finish | Total slack | Resources | Work | Actual work | Cost | Actual cost |
| --- | --- | --- | --- | --- | --- | --- | --- | --- | --- | --- | --- | --- | --- | --- | --- | --- | --- |
| 1 | 1 | **Uper Mobile Application Project** |  | 129d | 2024-11-21 A | 2025-05-20 |  | 25% | 96.43d | 2024-11-21 | 2025-05-20 | 0d |  | 1806h | 386h | 149,825 | 25,540 |
| 2 | 1.1 | **Analysis Stage** |  | 17d | 2024-11-21 A | 2024-12-15 A |  | 100% |  | 2024-11-21 | 2024-12-15 |  |  | 328h | 328h | 22,960 | 22,960 |
| 3 | 1.1.1 | **Passenger** |  | 3d | 2024-11-21 A | 2024-11-25 A |  | 100% |  | 2024-11-21 | 2024-11-25 |  |  | 64h | 64h | 4,480 | 4,480 |
| 4 | 1.1.1.1 | User login and registration. |  | 3d | 2024-11-21 A | 2024-11-25 A |  | 100% |  | 2024-11-21 | 2024-11-25 |  | System Analyst Team | 24h | 24h | 1,680 | 1,680 |
| 5 | 1.1.1.2 | Search for available drivers. |  | 2d | 2024-11-21 A | 2024-11-24 A |  | 100% |  | 2024-11-21 | 2024-11-24 |  | System Analyst Team | 16h | 16h | 1,120 | 1,120 |
| 6 | 1.1.1.3 | Input pickup and drop-off locations. |  | 1d | 2024-11-21 A | 2024-11-21 A |  | 100% |  | 2024-11-21 | 2024-11-21 |  | System Analyst Team | 8h | 8h | 560 | 560 |
| 7 | 1.1.1.4 | Receive notifications (trip confirmation, driver arrival) |  | 2d | 2024-11-21 A | 2024-11-24 A |  | 100% |  | 2024-11-21 | 2024-11-24 |  | System Analyst Team | 16h | 16h | 1,120 | 1,120 |
| 8 | 1.1.2 | **Driver** |  | 3d | 2024-11-26 A | 2024-11-28 A | 3 | 100% |  | 2024-11-26 | 2024-11-28 |  |  | 80h | 80h | 5,600 | 5,600 |
| 9 | 1.1.2.1 | Requesting drivers to upload documents(driver’s license , ID). |  | 2d | 2024-11-26 A | 2024-11-27 A |  | 100% |  | 2024-11-26 | 2024-11-27 |  | System Analyst Team | 16h | 16h | 1,120 | 1,120 |
| 10 | 1.1.2.2 | Register Driver To the System |  | 1d | 2024-11-26 A | 2024-11-26 A |  | 100% |  | 2024-11-26 | 2024-11-26 |  | System Analyst Team | 8h | 8h | 560 | 560 |
| 11 | 1.1.2.3 | Login drivers |  | 1d | 2024-11-26 A | 2024-11-26 A |  | 100% |  | 2024-11-26 | 2024-11-26 |  | System Analyst Team | 8h | 8h | 560 | 560 |
| 12 | 1.1.2.4 | Receive and accept/reject trip requests. |  | 3d | 2024-11-26 A | 2024-11-28 A |  | 100% |  | 2024-11-26 | 2024-11-28 |  | System Analyst Team | 24h | 24h | 1,680 | 1,680 |
| 13 | 1.1.2.5 | Share current location via GPS. |  | 3d | 2024-11-26 A | 2024-11-28 A |  | 100% |  | 2024-11-26 | 2024-11-28 |  | System Analyst Team | 24h | 24h | 1,680 | 1,680 |
| 14 | 1.1.3 | **Admin** |  | 4d | 2024-12-01 A | 2024-12-04 A | 8 | 100% |  | 2024-12-01 | 2024-12-04 |  |  | 72h | 72h | 5,040 | 5,040 |
| 15 | 1.1.3.1 | Manage user and driver data (add/edit/block accounts). |  | 4d | 2024-12-01 A | 2024-12-04 A |  | 100% |  | 2024-12-01 | 2024-12-04 |  | System Analyst Team | 32h | 32h | 2,240 | 2,240 |
| 16 | 1.1.3.2 | Monitor trips. |  | 2d | 2024-12-01 A | 2024-12-02 A |  | 100% |  | 2024-12-01 | 2024-12-02 |  | System Analyst Team | 16h | 16h | 1,120 | 1,120 |
| 17 | 1.1.3.3 | Monitor revenue, active users, ( drivers,passengers) |  | 3d | 2024-12-01 A | 2024-12-03 A |  | 100% |  | 2024-12-01 | 2024-12-03 |  | System Analyst Team | 24h | 24h | 1,680 | 1,680 |
| 18 | 1.1.4 | **Maps** |  | 4d | 2024-12-05 A | 2024-12-10 A | 14 | 100% |  | 2024-12-05 | 2024-12-10 |  |  | 72h | 72h | 5,040 | 5,040 |
| 19 | 1.1.4.1 | Provide GPS for Drivers and Passengers |  | 3d | 2024-12-05 A | 2024-12-09 A |  | 100% |  | 2024-12-05 | 2024-12-09 |  | System Analyst Team | 24h | 24h | 1,680 | 1,680 |
| 20 | 1.1.4.2 | Draw the trip route between pickup and drop-off points. |  | 4d | 2024-12-05 A | 2024-12-10 A |  | 100% |  | 2024-12-05 | 2024-12-10 |  | System Analyst Team | 32h | 32h | 2,240 | 2,240 |
| 21 | 1.1.4.3 | Calculate trip time and distance. |  | 2d | 2024-12-05 A | 2024-12-08 A |  | 100% |  | 2024-12-05 | 2024-12-08 |  | System Analyst Team | 16h | 16h | 1,120 | 1,120 |
| 22 | 1.1.5 | **Payment** |  | 3d | 2024-12-11 A | 2024-12-15 A | 18 | 100% |  | 2024-12-11 | 2024-12-15 |  |  | 40h | 40h | 2,800 | 2,800 |
| 23 | 1.1.5.1 | Online payments using platforms like PayPal. |  | 3d | 2024-12-11 A | 2024-12-15 A |  | 100% |  | 2024-12-11 | 2024-12-15 |  | System Analyst Team | 24h | 24h | 1,680 | 1,680 |
| 24 | 1.1.5.2 | Allow various payment methods (credit/debit cards, e-wallets). |  | 2d | 2024-12-11 A | 2024-12-12 A |  | 100% |  | 2024-12-11 | 2024-12-12 |  | System Analyst Team | 16h | 16h | 1,120 | 1,120 |
| 25 | 1.1.6 | End of Analysis Stage | milestone | 0d | 2024-12-15 A | 2024-12-15 A | 22 | 100% |  | 2024-12-15 | 2024-12-15 |  |  |  |  |  |  |

| ID | WBS | Task | Duration | Start | Finish | Predecessors | Complete | Remaining | Baseline 1 start | Baseline 1 finish | Total slack | Free slack | Resources | Work | Actual work | Cost | Actual cost |
| --- | --- | --- | --- | --- | --- | --- | --- | --- | --- | --- | --- | --- | --- | --- | --- | --- | --- |
| 26 | 1.2 | **Design** | 24d | 2024-12-16 A | 2025-01-16 | 2 | 23% | 18.42d | 2024-12-16 | 2025-01-16 | 0d |  |  | 310h | 58h | 14,940 | 2,580 |
| 27 | 1.2.1 | **System Diagrams** | 3d | 2024-12-16 A | 2024-12-18 A |  | 100% |  | 2024-12-16 | 2024-12-18 |  |  |  | 18h | 18h | 900 | 900 |
| 28 | 1.2.1.1 | Draw interaction between Passengers, drivers, and admins withthesystem (login, search, and booking rides) | 3d | 2024-12-16 A | 2024-12-18 A |  | 100% |  | 2024-12-16 | 2024-12-18 |  |  | System diagram Designer [75%] | 18h | 18h | 900 | 900 |
| 29 | 1.2.2 | **UI/UX** | 21d | 2024-12-19 A | 2025-01-16 | 27 | 9% | 19.09d | 2024-12-19 | 2025-01-16 | 0d |  |  | 264h | 24h | 13,200 | 1,200 |
| 30 | 1.2.2.1 | **UI(User Interface)** | 14d | 2024-12-19 A | 2025-01-07 |  | 12% | 12.38d | 2024-12-19 | 2025-01-07 | 0d |  |  | 208h | 24h | 10,400 | 1,200 |
| 31 | 1.2.2.1.1 | **Passenger Module** | 4d | 2024-12-19 A | 2024-12-24 |  | 33% | 2.67d | 2024-12-19 | 2024-12-24 | 2d | 0d |  | 72h | 24h | 3,600 | 1,200 |
| 32 | 1.2.2.1.1.1 | Login Screen | 3d | 2024-12-19 A | 2024-12-23 |  | 33% | 2d | 2024-12-19 | 2024-12-23 | 3d |  | UI/UX Designer Team | 24h | 8h | 1,200 | 400 |
| 33 | 1.2.2.1.1.2 | Search and trip Reservation Screen | 4d | 2024-12-19 A | 2024-12-24 |  | 25% | 3d | 2024-12-19 | 2024-12-24 | 2d |  | UI/UX Designer Team | 32h | 8h | 1,600 | 400 |
| 34 | 1.2.2.1.1.3 | Payment and Notification Screen | 2d | 2024-12-19 A | 2024-12-22 |  | 50% | 1d | 2024-12-19 | 2024-12-22 | 4d |  | UI/UX Designer Team | 16h | 8h | 800 | 400 |
| 35 | 1.2.2.1.2 | **Driver Module** | 5d | 2024-12-25 | 2024-12-31 | 31 |  |  | 2024-12-25 | 2024-12-31 | 2d | 0d |  | 96h |  | 4,800 |  |
| 36 | 1.2.2.1.2.1 | Registration and document upload screens. | 4d | 2024-12-25 | 2024-12-30 |  |  |  | 2024-12-25 | 2024-12-30 | 3d |  | UI/UX Designer Team | 32h |  | 1,600 |  |
| 37 | 1.2.2.1.2.2 | Accept and Reject Trips | 3d | 2024-12-25 | 2024-12-29 |  |  |  | 2024-12-25 | 2024-12-29 | 4d |  | UI/UX Designer Team | 24h |  | 1,200 |  |
| 38 | 1.2.2.1.2.3 | Sharing Location Screen | 5d | 2024-12-25 | 2024-12-31 |  |  |  | 2024-12-25 | 2024-12-31 | 2d |  | UI/UX Designer Team | 40h |  | 2,000 |  |
| 39 | 1.2.2.1.3 | **Admin Module** | 5d | 2025-01-01 | 2025-01-07 | 35 |  |  | 2025-01-01 | 2025-01-07 | 0d |  |  | 40h |  | 2,000 |  |
| 40 | 1.2.2.1.3.1 | Dashboard for user and driver account management. | 3d | 2025-01-01 | 2025-01-05 |  |  |  | 2025-01-01 | 2025-01-05 | 2d |  | UI/UX Designer Team | 24h |  | 1,200 |  |
| 41 | 1.2.2.1.3.2 | Monitoring screens for revenue. | 2d | 2025-01-06 | 2025-01-07 |  |  |  | 2025-01-06 | 2025-01-07 | 0d |  | UI/UX Designer Team | 16h |  | 800 |  |
| 42 | 1.2.2.2 | UX (User Experience) | 7d | 2025-01-08 | 2025-01-16 | 30 |  |  | 2025-01-08 | 2025-01-16 | 0d |  | UI/UX Designer Team | 56h |  | 2,800 |  |
| 43 | 1.2.3 | Logo | 7d | 2024-12-16 A | 2024-12-29 | 27SS | 57% | 3d | 2024-12-16 | 2024-12-29 | 11d |  | Graphic Designer [50%] | 28h | 16h | 840 | 480 |
| 44 | 1.3 | **Implementation** | 25d | 2025-01-19 | 2025-02-20 | 26 |  |  | 2025-01-19 | 2025-02-20 | 0d |  | Software Tools [0.1%]; Deployment Team | 520h |  | 55,950 |  |
| 45 | 1.3.1 | **Frontend** | 25d | 2025-01-19 | 2025-02-20 |  |  |  | 2025-01-19 | 2025-02-20 | 0d |  |  | 200h |  | 14,000 |  |
| 46 | 1.3.1.1 | **Mobile Application (For Passengers&Drivers)** | 15d | 2025-01-19 | 2025-02-06 |  |  |  | 2025-01-19 | 2025-02-06 | 0d |  |  | 120h |  | 8,400 |  |
| 47 | 1.3.1.1.1 | Coding User Interfaces (UI) for mobile app screens | 15d | 2025-01-19 | 2025-02-06 |  |  |  | 2025-01-19 | 2025-02-06 | 0d |  | Frontend Developer Team | 120h |  | 8,400 |  |
| 48 | 1.3.1.2 | **Admin Dashboard** | 10d | 2025-02-09 | 2025-02-20 | 47 |  |  | 2025-02-09 | 2025-02-20 | 0d |  |  | 80h |  | 5,600 |  |
| 49 | 1.3.1.2.1 | Coding Admin Dashboard (user management, and revenue tracking,driver management) | 2w | 2025-02-09 | 2025-02-20 |  |  |  | 2025-02-09 | 2025-02-20 | 0d |  | Frontend Developer Team | 80h |  | 5,600 |  |

| ID | WBS | Task | Duration | Start | Finish | Predecessors | Baseline 1 start | Baseline 1 finish | Total slack | Resources | Work | Cost |
| --- | --- | --- | --- | --- | --- | --- | --- | --- | --- | --- | --- | --- |
| 50 | 1.3.2 | **Backend** | 5d | 2025-01-19 | 2025-01-23 | 45SS | 2025-01-19 | 2025-01-23 | 20d |  | 120h | 9,950 |
| 51 | 1.3.2.1 | **Database** | 3d | 2025-01-19 | 2025-01-21 |  | 2025-01-19 | 2025-01-21 | 22d |  | 80h | 6,750 |
| 52 | 1.3.2.1.1 | Adding Data | 3d | 2025-01-19 | 2025-01-21 |  | 2025-01-19 | 2025-01-21 | 22d | Backend Developer Team | 24h | 1,920 |
| 53 | 1.3.2.1.2 | Implement ER Diagram | 2d | 2025-01-19 | 2025-01-20 |  | 2025-01-19 | 2025-01-20 | 23d | Backend Developer Team | 16h | 1,280 |
| 54 | 1.3.2.1.3 | Storing Data | 3d | 2025-01-19 | 2025-01-21 |  | 2025-01-19 | 2025-01-21 | 22d | Backend Developer Team; Storage Devices [7 Device] | 24h | 2,270 |
| 55 | 1.3.2.1.4 | Set up Backup for Data | 2d | 2025-01-19 | 2025-01-20 |  | 2025-01-19 | 2025-01-20 | 23d | Backend Developer Team | 16h | 1,280 |
| 56 | 1.3.2.2 | **Logic&Algorithms** | 5d | 2025-01-19 | 2025-01-23 |  | 2025-01-19 | 2025-01-23 | 20d |  | 40h | 3,200 |
| 57 | 1.3.2.2.1 | Coding location algorithms (choose the nearest driver to the user in real-time) | 1w | 2025-01-19 | 2025-01-23 |  | 2025-01-19 | 2025-01-23 | 20d | Backend Developer Team | 40h | 3,200 |
| 58 | 1.4 | **Testing** | 25d | 2025-02-23 | 2025-03-27 | 44 | 2025-02-23 | 2025-03-27 | 0d | Testing Servers [5 Device] | 200h | 16,150 |
| 59 | 1.4.1 | Unit Testing | 2w | 2025-02-23 | 2025-03-06 |  | 2025-02-23 | 2025-03-06 | 0d | Tester (QA Specialist) Team | 80h | 6,400 |
| 60 | 1.4.2 | Integration Testing | 2w | 2025-03-09 | 2025-03-20 | 59 | 2025-03-09 | 2025-03-20 | 0d | Tester (QA Specialist) Team | 80h | 6,400 |
| 61 | 1.4.3 | Load Testing | 1w | 2025-03-23 | 2025-03-27 | 60 | 2025-03-23 | 2025-03-27 | 0d | Tester (QA Specialist) Team | 40h | 3,200 |
| 62 | 1.5 | **Infrastructure** | 5d | 2025-03-30 | 2025-04-03 | 58 | 2025-03-30 | 2025-04-03 | 0d |  | 80h | 8,325 |
| 63 | 1.5.1 | Servers Setup | 1w | 2025-03-30 | 2025-04-03 |  | 2025-03-30 | 2025-04-03 | 0d | IT team; Servers [5 Server] | 40h | 3,325 |
| 64 | 1.5.2 | Network setup | 1w | 2025-03-30 | 2025-04-03 | 63SS | 2025-03-30 | 2025-04-03 | 0d | IT team; Network Cables [150 Cable]; Routers [4 Router]; Switchs [5 Switch] | 40h | 5,000 |
| 65 | 1.6 | **Security** | 10d | 2025-04-06 | 2025-04-17 | 62 | 2025-04-06 | 2025-04-17 | 0d | Security devices [6 Device] | 160h | 12,180 |
| 66 | 1.6.1 | Data Encryption | 10d | 2025-04-06 | 2025-04-17 |  | 2025-04-06 | 2025-04-17 | 0d | Security Specialist Team | 80h | 6,000 |
| 67 | 1.6.2 | Set up authentication | 10d | 2025-04-06 | 2025-04-17 |  | 2025-04-06 | 2025-04-17 | 0d | Security Specialist Team | 80h | 6,000 |
| 68 | 1.7 | **Deployment** | 10d | 2025-04-20 | 2025-05-01 | 65 | 2025-04-20 | 2025-05-01 | 0d |  | 80h | 4,800 |
| 69 | 1.7.1 | Upload the Mobile App to Owner | 10d | 2025-04-20 | 2025-05-01 |  | 2025-04-20 | 2025-05-01 | 0d | Deployment Team | 80h | 4,800 |
| 70 | 1.8 | **Training** | 13d | 2025-05-04 | 2025-05-20 | 68 | 2025-05-04 | 2025-05-20 | 0d | Training Cost [0.1%]; Graphic Designer [50%] | 128h | 14,520 |
| 71 | 1.8.1 | Training for Interface | 1w | 2025-05-04 | 2025-05-08 |  | 2025-05-04 | 2025-05-08 | 0d | Training Team | 40h | 3,000 |
| 72 | 1.8.2 | Dealing with Maps | 5d | 2025-05-11 | 2025-05-15 | 71 | 2025-05-11 | 2025-05-15 | 0d | Training Team | 40h | 3,000 |
| 73 | 1.8.3 | Payment Management | 3d | 2025-05-18 | 2025-05-20 | 72 | 2025-05-18 | 2025-05-20 | 0d | Training Team | 24h | 1,800 |
